# GestiónProyecto_Llamathrust_Optimizado

Schedule from MS Project, 2019-02-04 to 2020-09-28, costs in €, A marks actual dates.

## Calendars

- Estándar: Mon-Fri 09:00-13:00, 15:00-19:00; Sat-Sun off. Exceptions (off unless hours are given): 2019-04-18 (Jueves Santo, recurring), 2019-04-19 (Viernes Santo, recurring), 2019-05-01 (Fiesta del Trabajo, recurring), 2019-05-02 (Fiesta de la Comunidad de Madrid, recurring), 2019-08-06 (Santos Justo y Pastor, recurring), 2019-08-15 (Asunción de la Virgen, recurring), 2019-10-09 (Bautismo de Miguel de Cervantes, recurring), 2019-10-12 (Día de la Hispanidad, recurring), 2019-11-01 (Todos los Santos, recurring), 2019-12-06 (Día de la Constitución, recurring), 2019-12-09 (Inmaculada Concepción, recurring), 2019-12-25 (Navidad, recurring), 2019-12-31 (Víspera de Año Nuevo, recurring), 2020-01-01 (Año Nuevo, recurring), 2020-03-17 (San Patricio, recurring).

## Resources

| Resource | Rate |
| --- | --- |
| Scrum Master | 15 |
| Analista | 13 |
| Programador | 14 |
| Técnico | 13 |

## Schedule

| ID | WBS | Task | Duration | Start | Finish | Predecessors | Complete | Remaining | Total slack | Resources | Work | Actual work | Cost | Actual cost | Text1 |
| --- | --- | --- | --- | --- | --- | --- | --- | --- | --- | --- | --- | --- | --- | --- | --- |
| 1 | 1 | **Llamathrust** | 417d | 2019-02-04 A | 2020-09-28 |  | 16% | 351.37d | 0d |  | 10680h | 1568h | 146,912 | 21,584 |  |
| 2 | 1.1 | **Dispositivos Enchufe** | 417d | 2019-02-04 A | 2020-09-28 |  | 15% | 352.66d | 0d |  | 5912h | 832h | 81,672 | 11,648 | Tarea |
| 3 | 1.1.1 | **Tomar datos de los sensores** | 75d | 2019-02-04 A | 2019-05-23 |  | 70% | 22.3d | 0d |  | 1536h | 832h | 21,328 | 11,648 | Estado Inicial |
| 4 | 1.1.1.1 | Planificación | 7d | 2019-02-04 A | 2019-02-12 A |  | 100% |  |  | Scrum Master; Técnico | 112h | 112h | 1,568 | 1,568 |  |
| 5 | 1.1.1.2 | Diseño del producto | 18d | 2019-02-13 A | 2019-03-08 A | 4 | 100% |  |  | Scrum Master; Técnico | 288h | 288h | 4,032 | 4,032 |  |
| 6 | 1.1.1.3 | Programación | 38d | 2019-03-11 A | 2019-05-08 | 5 | 71% | 11d | 0d | Scrum Master; Técnico; Analista; Programador | 784h | 432h | 10,888 | 6,048 |  |
| 7 | 1.1.1.4 | Integración y prueba | 11d | 2019-05-09 | 2019-05-23 | 6 |  |  | 0d | Scrum Master; Técnico; Analista; Programador | 352h |  | 4,840 |  |  |
| 8 | 1.1.2 | **Conectar los enchufes con la puerta de enlace** | 131d | 2019-05-24 | 2019-11-28 | 3, 40 |  |  | 0d |  | 2072h |  | 29,136 |  |  |
| 9 | 1.1.2.1 | Planificación | 8d | 2019-05-24 | 2019-06-04 |  |  |  | 0d | Scrum Master | 64h |  | 960 |  |  |
| 10 | 1.1.2.2 | Diseño del producto | 21d | 2019-06-05 | 2019-07-03 | 9 |  |  | 0d | Scrum Master | 168h |  | 2,520 |  |  |
| 11 | 1.1.2.3 | Programación | 89d | 2019-07-04 | 2019-11-11 | 10 |  |  | 0d | Scrum Master; Técnico | 1424h |  | 19,936 |  |  |
| 12 | 1.1.2.4 | Integración y prueba | 13d | 2019-11-12 | 2019-11-28 | 11 |  |  | 0d | Scrum Master; Técnico; Analista; Programador | 416h |  | 5,720 |  |  |
| 13 | 1.1.3 | **Gestión de tareas que tomarán los datos periódicamente** | 132d | 2020-03-27 | 2020-09-28 | 24 |  |  | 0d |  | 2304h |  | 31,208 |  |  |
| 14 | 1.1.3.1 | Planificación | 8d | 2020-03-27 | 2020-04-07 |  |  |  | 0d | Analista; Programador | 128h |  | 1,728 |  |  |
| 15 | 1.1.3.2 | Diseño del producto | 22d | 2020-04-08 | 2020-05-07 | 14 |  |  | 0d | Analista; Programador | 336h |  | 4,536 |  |  |
| 16 | 1.1.3.3 | Programación | 89d | 2020-05-08 | 2020-09-09 | 15 |  |  | 0d | Analista; Programador | 1424h |  | 19,224 |  |  |
| 17 | 1.1.3.4 | Integración y prueba | 13d | 2020-09-10 | 2020-09-28 | 16 |  |  | 0d | Analista; Programador; Scrum Master; Técnico | 416h |  | 5,720 |  |  |
| 18 | 1.2 | **Dispositivos de puerta de enlace** | 116d | 2019-11-29 | 2020-05-18 |  |  |  | 0d |  | 1576h |  | 21,688 |  | Tarea |
| 19 | 1.2.1 | **Conectar la puerta de enlace con los enchufes** | 11d | 2019-11-29 | 2019-12-17 | 8 |  |  | 0d |  | 320h |  | 4,400 |  |  |
| 20 | 1.2.1.1 | Planificación | 1d | 2019-11-29 | 2019-11-29 |  |  |  | 0d | Scrum Master; Técnico | 16h |  | 224 |  |  |
| 21 | 1.2.1.2 | Diseño del producto | 1d | 2019-12-02 | 2019-12-02 | 20 |  |  | 0d | Scrum Master; Técnico; Programador; Analista | 32h |  | 440 |  |  |
| 22 | 1.2.1.3 | Programación | 7d | 2019-12-03 | 2019-12-13 | 21 |  |  | 0d | Scrum Master; Técnico; Analista; Programador | 224h |  | 3,080 |  |  |
| 23 | 1.2.1.4 | Integración y prueba | 2d | 2019-12-13 | 2019-12-17 | 22 |  |  | 0d | Scrum Master; Técnico; Analista; Programador | 48h |  | 656 |  |  |
| 24 | 1.2.2 | **Conectar la puerta de enlace con la base de datos** | 16d | 2020-03-04 | 2020-03-26 | 45 |  |  | 0d |  | 256h |  | 3,456 |  |  |
| 25 | 1.2.2.1 | Planificación | 1d | 2020-03-04 | 2020-03-04 |  |  |  | 0d | Analista; Programador | 16h |  | 216 |  |  |
| 26 | 1.2.2.2 | Diseño del producto | 2d | 2020-03-05 | 2020-03-06 | 25 |  |  | 0d | Analista; Programador | 32h |  | 432 |  |  |
| 27 | 1.2.2.3 | Programación | 10d | 2020-03-09 | 2020-03-23 | 26 |  |  | 0d | Analista; Programador | 160h |  | 2,160 |  |  |
| 28 | 1.2.2.4 | Integración y prueba | 3d | 2020-03-24 | 2020-03-26 | 27 |  |  | 0d | Analista; Programador | 48h |  | 648 |  |  |

| ID | WBS | Task | Duration | Start | Finish | Predecessors | Complete | Remaining | Total slack | Free slack | Resources | Work | Actual work | Cost | Actual cost | Text1 |
| --- | --- | --- | --- | --- | --- | --- | --- | --- | --- | --- | --- | --- | --- | --- | --- | --- |
| 29 | 1.2.3 | **Procesar las medidas recibidas de los sensores** | 24d | 2019-12-18 | 2020-01-23 | 19 |  |  | 0d |  |  | 488h |  | 6,664 |  |  |
| 30 | 1.2.3.1 | Planificación | 1d | 2019-12-18 | 2019-12-18 |  |  |  | 0d |  | Scrum Master; Técnico; Analista | 24h |  | 328 |  |  |
| 31 | 1.2.3.2 | Diseño del producto | 5d | 2019-12-19 | 2019-12-26 | 30 |  |  | 0d |  | Scrum Master; Técnico; Analista | 96h |  | 1,328 |  |  |
| 32 | 1.2.3.3 | Progamación | 15d | 2019-12-27 | 2020-01-20 | 31 |  |  | 0d |  | Scrum Master; Técnico; Analista; Programador | 272h |  | 3,688 |  |  |
| 33 | 1.2.3.4 | Integración y prueba | 3d | 2020-01-21 | 2020-01-23 | 32 |  |  | 0d |  | Scrum Master; Técnico; Analista; Programador | 96h |  | 1,320 |  |  |
| 34 | 1.2.4 | **Enlazar la puerta enlace con la aplicación de usuario** | 32d | 2020-04-03 | 2020-05-18 | 50 |  |  | 72d | 0d |  | 512h |  | 7,168 |  |  |
| 35 | 1.2.4.1 | Planificación | 1d | 2020-04-03 | 2020-04-03 |  |  |  | 72d | 0d | Scrum Master; Técnico | 16h |  | 224 |  |  |
| 36 | 1.2.4.2 | Diseño del producto | 5d | 2020-04-06 | 2020-04-10 | 35 |  |  | 72d | 0d | Scrum Master; Técnico | 80h |  | 1,120 |  |  |
| 37 | 1.2.4.3 | Programación | 20d | 2020-04-13 | 2020-05-08 | 36 |  |  | 72d | 0d | Scrum Master; Técnico | 320h |  | 4,480 |  |  |
| 38 | 1.2.4.4 | Integración y prueba | 6d | 2020-05-11 | 2020-05-18 | 37 |  |  | 72d |  | Scrum Master; Técnico | 96h |  | 1,344 |  |  |
| 39 | 1.3 | **Aplicación de clientes** | 290d | 2019-02-04 A | 2020-04-02 |  | 40% | 173.5d | 72d |  |  | 1840h | 736h | 25,168 | 9,936 | Tarea |
| 40 | 1.3.1 | **Creación de la interfaz** | 47d | 2019-02-04 A | 2019-04-09 A |  | 100% |  |  |  |  | 736h | 736h | 9,936 | 9,936 | Estado Inicial |
| 41 | 1.3.1.1 | Planificación | 2d | 2019-02-04 A | 2019-02-05 A |  | 100% |  |  |  | Analista; Programador | 32h | 32h | 432 | 432 |  |
| 42 | 1.3.1.2 | Diseño del producto | 7d | 2019-02-06 A | 2019-02-14 A | 41 | 100% |  |  |  | Analista; Programador | 112h | 112h | 1,512 | 1,512 |  |
| 43 | 1.3.1.3 | Programación | 30d | 2019-02-15 A | 2019-03-28 A | 42 | 100% |  |  |  | Analista; Programador | 464h | 464h | 6,264 | 6,264 |  |
| 44 | 1.3.1.4 | Integración y prueba | 8d | 2019-03-29 A | 2019-04-09 A | 43 | 100% |  |  |  | Analista; Programador | 128h | 128h | 1,728 | 1,728 |  |
| 45 | 1.3.2 | **Enlazar la aplicación con la base de datos** | 28d | 2020-01-24 | 2020-03-03 | 61, 29 |  |  | 0d |  |  | 448h |  | 6,048 |  |  |
| 46 | 1.3.2.1 | Planificación | 1d | 2020-01-24 | 2020-01-24 |  |  |  | 0d |  | Analista; Programador | 16h |  | 216 |  |  |
| 47 | 1.3.2.2 | Diseño del producto | 4d | 2020-01-27 | 2020-01-30 | 46 |  |  | 0d |  | Analista; Programador | 64h |  | 864 |  |  |
| 48 | 1.3.2.3 | Progamación | 18d | 2020-01-31 | 2020-02-25 | 47 |  |  | 0d |  | Analista; Programador | 288h |  | 3,888 |  |  |
| 49 | 1.3.2.4 | Integración y prueba | 5d | 2020-02-26 | 2020-03-03 | 48 |  |  | 0d |  | Analista; Programador | 80h |  | 1,080 |  |  |
| 50 | 1.3.3 | **Mostrar los datos recibidos en la interfaz** | 49d | 2020-01-24 | 2020-04-02 | 61, 29 |  |  | 70d | 0d |  | 656h |  | 9,184 |  |  |
| 51 | 1.3.3.1 | Planificación | 2d | 2020-01-24 | 2020-01-27 |  |  |  | 70d | 0d | Scrum Master; Técnico | 32h |  | 448 |  |  |
| 52 | 1.3.3.2 | Diseño del producto | 6d | 2020-01-28 | 2020-02-04 | 51 |  |  | 70d | 0d | Scrum Master; Técnico | 96h |  | 1,344 |  |  |
| 53 | 1.3.3.3 | Programación | 27d | 2020-02-05 | 2020-03-24 | 52 |  |  | 70d | 0d | Scrum Master; Técnico | 416h |  | 5,824 |  |  |
| 54 | 1.3.3.4 | Integración y prueba | 7d | 2020-03-25 | 2020-04-02 | 53 |  |  | 72d |  | Scrum Master; Técnico | 112h |  | 1,568 |  |  |

| ID | WBS | Task | Duration | Start | Finish | Predecessors | Total slack | Free slack | Resources | Work | Cost | Text1 |
| --- | --- | --- | --- | --- | --- | --- | --- | --- | --- | --- | --- | --- |
| 55 | 1.4 | **Base de datos** | 270d | 2019-05-24 | 2020-06-18 |  | 72d |  |  | 1352h | 18,384 | Tarea |
| 56 | 1.4.1 | **Crear la estructura de los datos** | 59d | 2019-05-24 | 2019-08-16 | 3, 40 | 74d | 0d |  | 648h | 8,744 |  |
| 57 | 1.4.1.1 | Planificación | 2d | 2019-05-24 | 2019-05-27 |  | 92d | 0d | Analista; Programador | 24h | 320 |  |
| 58 | 1.4.1.2 | Diseño del producto | 6d | 2019-05-28 | 2019-06-04 | 57 | 92d | 0d | Analista; Programador | 96h | 1,296 |  |
| 59 | 1.4.1.3 | Programación | 26d | 2019-06-05 | 2019-07-10 | 58 | 92d | 0d | Analista; Programador | 416h | 5,616 |  |
| 60 | 1.4.1.4 | Integración y prueba | 12d | 2019-07-11 | 2019-08-16 | 59 | 74d |  | Analista; Programador | 112h | 1,512 |  |
| 61 | 1.4.2 | **Recibir peticiones externas** | 23d | 2019-08-19 | 2019-09-18 | 56 | 74d |  |  | 368h | 4,968 |  |
| 62 | 1.4.2.1 | Planificación | 1d | 2019-08-19 | 2019-08-19 |  | 74d | 0d | Analista; Programador | 16h | 216 |  |
| 63 | 1.4.2.2 | Diseño del producto | 3d | 2019-08-20 | 2019-08-22 | 62 | 74d | 0d | Analista; Programador | 48h | 648 |  |
| 64 | 1.4.2.3 | Programación | 15d | 2019-08-23 | 2019-09-12 | 63 | 74d | 0d | Analista; Programador | 240h | 3,240 |  |
| 65 | 1.4.2.4 | Integración y prueba | 4d | 2019-09-13 | 2019-09-18 | 64 | 84d |  | Analista; Programador | 64h | 864 |  |
| 66 | 1.4.3 | **Gestión de cuentas** | 23d | 2020-05-19 | 2020-06-18 | 34 | 72d |  |  | 336h | 4,672 |  |
| 67 | 1.4.3.1 | Planificación | 1d | 2020-05-19 | 2020-05-19 |  | 72d | 0d | Scrum Master; Técnico | 16h | 224 |  |
| 68 | 1.4.3.2 | Diseño del producto | 3d | 2020-05-20 | 2020-05-22 | 67 | 72d | 0d | Scrum Master; Técnico | 48h | 672 |  |
| 69 | 1.4.3.3 | Programación | 15d | 2020-05-25 | 2020-06-12 | 68 | 72d | 0d | Scrum Master; Técnico | 240h | 3,360 |  |
| 70 | 1.4.3.4 | Integración y prueba | 4d | 2020-06-15 | 2020-06-18 | 69 | 72d |  | Técnico | 32h | 416 |  |
